# 安徽商贸中后期产品研发与实施计划

Schedule from MS Project, 2013-01-30 to 2013-07-19, A marks actual dates.
CSG

## Calendars

- 标准: Mon-Fri 08:00-12:00, 13:00-17:00; Sat-Sun off. Exceptions (off unless hours are given): 2013-02-16 to 2013-02-17 08:00-12:00, 13:00-17:00 (春节换休工作日), 2013-04-04 to 2013-04-05 (清明节休假日), 2013-04-07 08:00-12:00, 13:00-17:00 (清明节换休工作日), 2013-04-27 to 2013-04-28 08:00-12:00, 13:00-17:00 (劳动节换休工作日), 2013-04-29 to 2013-05-01 (劳动节休假日), 2013-06-08 to 2013-06-09 08:00-12:00, 13:00-17:00 (端午节换休工作日), 2013-06-10 to 2013-06-12 (端午节休假日).

## Resources

| Resource |
| --- |
| PPT评审标准 |
| 视频评审标准 |

## Schedule

| ID | WBS | Task | Type | Duration | Start | Finish | Predecessors | Complete | Constraint |
| --- | --- | --- | --- | --- | --- | --- | --- | --- | --- |
| 1 | 1 | **课程产品与交付物研发** |  | 122d | 2013-01-30 A | 2013-07-19 A |  | 100% |  |
| 2 | 1.1 | **JAVA语言程序设计（产品修改与交付周期）** |  | 51d | 2013-01-30 A | 2013-04-09 A |  | 100% | start no earlier than 2013-01-30 |
| 3 | 1.1.1 | 章和节内容完善 |  | 1d | 2013-01-30 A | 2013-01-30 A |  | 100% | start no earlier than 2013-01-30 |
| 4 | 1.1.2 | 知识点，课时确定 |  | 1d | 2013-01-31 A | 2013-01-31 A | 3 | 100% | start no earlier than 2013-01-31 |
| 5 | 1.1.3 | 配套课后练习与习题 |  | 10d | 2013-02-21 A | 2013-03-06 A |  | 100% | finish no earlier than 2013-02-21 |
| 6 | 1.1.4 | JAVA语言程序设计-产品交付 | milestone | 1d | 2013-04-09 A | 2013-04-09 A |  | 100% |  |
| 7 | 1.2 | **XML语言基础（产品修改与交付周期）** |  | 52d | 2013-02-01 A | 2013-04-12 A | 3 | 100% |  |
| 8 | 1.2.1 | 章和节内容完善 |  | 1d | 2013-02-01 A | 2013-02-01 A | 3 | 100% | start no earlier than 2013-02-01 |
| 9 | 1.2.2 | 知识点，课时确定 |  | 1d | 2013-02-04 A | 2013-02-04 A | 8 | 100% | start no earlier than 2013-01-30 |
| 10 | 1.2.3 | 配套课后练习与习题 |  | 5d | 2013-03-07 A | 2013-03-13 A | 5 | 100% |  |
| 11 | 1.2.4 | XML语言基础-产品交付 | milestone | 1d | 2013-04-12 A | 2013-04-12 A |  | 100% |  |
| 12 | 1.3 | **Oracle数据库操与SQL语言（产品研发与交付周期）** |  | 25d | 2013-02-18 A | 2013-03-22 A |  | 100% | start no earlier than 2013-02-18 |
| 13 | 1.3.1 | Oracle大纲确立与完善 |  | 5d | 2013-02-18 A | 2013-02-22 A |  | 100% |  |
| 14 | 1.3.2 | Oracle第二章PPT最终交付 |  | 2d | 2013-02-25 A | 2013-02-26 A | 13 | 100% | start no earlier than 2013-02-25 |
| 15 | 1.3.3 | Oracle第一章PPT最终交付 |  | 2d | 2013-02-27 A | 2013-02-28 A | 14 | 100% |  |
| 16 | 1.3.4 | Oracle第二章视频最终交付 |  | 4d | 2013-02-25 A | 2013-02-28 A | 14SS, 15FF | 100% |  |
| 17 | 1.3.5 | Oracle第三章PPT最终交付 |  | 2d | 2013-03-01 A | 2013-03-04 A | 15 | 100% |  |
| 18 | 1.3.6 | Oracle第四章PPT最终交付 |  | 2d | 2013-03-05 A | 2013-03-06 A | 17 | 100% |  |
| 19 | 1.3.7 | Oracle第五章PPT最终交付 |  | 2d | 2013-03-07 A | 2013-03-08 A | 18 | 100% |  |
| 20 | 1.3.8 | Oracle第六章PPT最终交付 |  | 2d | 2013-03-11 A | 2013-03-12 A |  | 100% |  |
| 21 | 1.3.9 | Oracle第一章视频最终交付 |  | 3d | 2013-03-01 A | 2013-03-05 A | 16 | 100% |  |
| 22 | 1.3.10 | Oracle第三章视频最终交付 |  | 2d | 2013-03-06 A | 2013-03-07 A | 21 | 100% |  |
| 23 | 1.3.11 | Oracle第四章视频最终交付 |  | 2d | 2013-03-08 A | 2013-03-11 A | 22 | 100% |  |
| 24 | 1.3.12 | Oracle第五章视频最终交付 |  | 2d | 2013-03-12 A | 2013-03-13 A | 23 | 100% |  |
| 25 | 1.3.13 | Oracle第六章视频最终交付 |  | 2d | 2013-03-14 A | 2013-03-15 A | 24 | 100% |  |
| 26 | 1.3.14 | Oracle配套习题 |  | 5d | 2013-03-18 A | 2013-03-22 A | 25 | 100% |  |
| 27 | 1.3.15 | Oracle数据库操与SQL语言-产品交付 | milestone | 1d | 2013-03-22 A | 2013-03-22 A | 26FF | 100% |  |

| ID | WBS | Task | Type | Duration | Start | Finish | Predecessors | Complete | Constraint |
| --- | --- | --- | --- | --- | --- | --- | --- | --- | --- |
| 28 | 1.4 | **JAVA高级应用程序设计（产品修改与交付周期）** |  | 62d | 2013-02-05 A | 2013-04-28 A | 9 | 100% |  |
| 29 | 1.4.1 | 章和节内容完善 |  | 1d | 2013-02-05 A | 2013-02-05 A | 9 | 100% | start no earlier than 2013-02-05 |
| 30 | 1.4.2 | 知识点，课时确定 |  | 1d | 2013-02-06 A | 2013-02-06 A | 29 | 100% | finish no earlier than 2013-02-06 |
| 31 | 1.4.3 | 配套课后练习与习题 |  | 10d | 2013-03-14 A | 2013-03-27 A | 10 | 100% |  |
| 32 | 1.4.4 | JAVA高级应用程序设计-产品交付 | milestone | 1d | 2013-04-28 A | 2013-04-28 A |  | 100% |  |
| 33 | 1.5 | **JAVA企业级应用开发（产品修改与交付周期）** |  | 63d | 2013-02-18 A | 2013-05-17 A | 30 | 100% |  |
| 34 | 1.5.1 | 章和节内容完善 |  | 1d | 2013-02-18 A | 2013-02-18 A | 32 | 100% | start no earlier than 2013-02-18 |
| 35 | 1.5.2 | 知识点，课时确定 |  | 2d | 2013-02-19 A | 2013-02-20 A | 34 | 100% | start no earlier than 2013-01-30 |
| 36 | 1.5.3 | Java企业级应用第一章PPT |  | 4d | 2013-03-21 A | 2013-03-26 A |  | 100% | start no earlier than 2013-03-21 |
| 37 | 1.5.4 | Java企业级应用第一章视频 |  | 2d | 2013-03-27 A | 2013-03-28 A | 36 | 100% |  |
| 38 | 1.5.5 | Java企业级应用第二章PPT |  | 7d | 2013-03-29 A | 2013-04-09 A | 37 | 100% |  |
| 39 | 1.5.6 | Java企业级应用第二章视频 |  | 6d | 2013-04-10 A | 2013-04-17 A | 38 | 100% |  |
| 40 | 1.5.7 | Java企业级应用第三章PPT |  | 7d | 2013-03-18 A | 2013-03-26 A |  | 100% | start no earlier than 2013-03-18 |
| 41 | 1.5.8 | Java企业级应用第三章视频 |  | 7d | 2013-03-27 A | 2013-04-09 A | 40 | 100% |  |
| 42 | 1.5.9 | Java企业级应用第四章PPT |  | 4d | 2013-04-10 A | 2013-04-15 A | 41 | 100% |  |
| 43 | 1.5.10 | Java企业级应用第四章视频 |  | 2d | 2013-04-16 A | 2013-04-17 A | 42 | 100% |  |
| 44 | 1.5.11 | 配套课后练习与习题 |  | 10d | 2013-03-28 A | 2013-04-11 A | 31 | 100% |  |
| 45 | 1.5.12 | JAVA企业级应用开发-产品交付 | milestone | 1d | 2013-05-17 A | 2013-05-17 A |  | 100% |  |
| 46 | 1.6 | **Unix/Linux操作系统基础（产品研发与交付周期）** |  | 19d | 2013-03-29 A | 2013-04-25 A | 12 | 100% |  |
| 47 | 1.6.1 | Unix/Linux操作系统大纲确立 |  | 2d | 2013-03-29 A | 2013-04-01 A |  | 100% | start no earlier than 2013-03-29 |
| 48 | 1.6.2 | Unix/Linux操作系统第一章PPT最终交付 |  | 2d | 2013-04-02 A | 2013-04-03 A | 47 | 100% |  |
| 49 | 1.6.3 | Unix/Linux操作系统第二章PPT最终交付 |  | 2d | 2013-04-07 A | 2013-04-08 A | 48 | 100% |  |
| 50 | 1.6.4 | Unix/Linux操作系统第三章PPT最终交付 |  | 2d | 2013-04-09 A | 2013-04-10 A | 49 | 100% |  |
| 51 | 1.6.5 | Unix/Linux操作系统第一章视频最终交付 |  | 2d | 2013-04-11 A | 2013-04-12 A | 50 | 100% |  |
| 52 | 1.6.6 | Unix/Linux操作系统第二章视频最终交付 |  | 2d | 2013-04-15 A | 2013-04-16 A | 51 | 100% |  |
| 53 | 1.6.7 | Unix/Linux操作系统第三章视频最终交付 |  | 2d | 2013-04-17 A | 2013-04-18 A | 52 | 100% |  |
| 54 | 1.6.8 | Unix/Linux操作系统配套习题 |  | 4d | 2013-04-19 A | 2013-04-24 A | 53 | 100% |  |
| 55 | 1.6.9 | Unix/Linux操作系-产品交付 | milestone | 1d | 2013-04-25 A | 2013-04-25 A | 54 | 100% |  |

| ID | WBS | Task | Type | Duration | Start | Finish | Predecessors | Complete | Constraint |
| --- | --- | --- | --- | --- | --- | --- | --- | --- | --- |
| 56 | 1.7 | **Unix/Linux Shell程序设计（产品研发与交付周期）** |  | 19d | 2013-02-18 A | 2013-03-14 A |  | 100% | start no earlier than 2013-02-18 |
| 57 | 1.7.1 | Unix/Linux Shell程序设计大纲确立与修改 |  | 1d | 2013-02-18 A | 2013-02-18 A |  | 100% | start no earlier than 2013-02-18 |
| 58 | 1.7.2 | Unix/Linux Shell程序设计第一章PPT&主持PPT |  | 1d | 2013-02-19 A | 2013-02-19 A | 57 | 100% |  |
| 59 | 1.7.3 | Unix/Linux Shell程序设计第一章经典习题&例题 |  | 1d | 2013-02-20 A | 2013-02-20 A | 58 | 100% |  |
| 60 | 1.7.4 | Unix/Linux Shell程序设计第二章PPT&主持PPT |  | 1d | 2013-02-22 A | 2013-02-22 A | 59FS+1d | 100% |  |
| 61 | 1.7.5 | Unix/Linux Shell程序设计第二章经典习题&例题 |  | 1d | 2013-02-25 A | 2013-02-25 A | 60 | 100% |  |
| 62 | 1.7.6 | Unix/Linux Shell程序设计第三章PPT&主持PPT |  | 1d | 2013-02-27 A | 2013-02-27 A | 61FS+1d | 100% |  |
| 63 | 1.7.7 | Unix/Linux Shell程序设计第三章经典习题&例题 |  | 1d | 2013-03-04 A | 2013-03-04 A | 62FS+2d | 100% |  |
| 64 | 1.7.8 | Unix/Linux Shell程序设计第四章PPT&主持PPT |  | 1d | 2013-03-05 A | 2013-03-05 A | 63 | 100% |  |
| 65 | 1.7.9 | Unix/Linux Shell程序设计第四章经典习题&例题 |  | 1d | 2013-03-06 A | 2013-03-06 A | 64 | 100% |  |
| 66 | 1.7.10 | Unix/Linux Shell程序设计综合实训案例 |  | 1d | 2013-03-07 A | 2013-03-07 A | 65 | 100% |  |
| 67 | 1.7.11 | Unix/Linux Shell程序设计第一章授课&例题视频 |  | 1d | 2013-03-08 A | 2013-03-08 A | 66 | 100% |  |
| 68 | 1.7.12 | Unix/Linux Shell程序设计第二章授课&例题视频 |  | 1d | 2013-03-11 A | 2013-03-11 A | 67 | 100% |  |
| 69 | 1.7.13 | Unix/Linux Shell程序设计第三章授课&例题视频 |  | 1d | 2013-03-12 A | 2013-03-12 A | 68 | 100% |  |
| 70 | 1.7.14 | Unix/Linux Shell程序设计第四章授课&例题视频 |  | 1d | 2013-03-13 A | 2013-03-13 A | 69 | 100% |  |
| 71 | 1.7.15 | Unix/Linux Shell程序设计PPT-产品交付 |  | 1d | 2013-03-06 A | 2013-03-06 A | 64 | 100% |  |
| 72 | 1.7.16 | Unix/Linux Shell程序设计习题&实训-产品交付 |  | 1d | 2013-03-08 A | 2013-03-08 A | 66 | 100% |  |
| 73 | 1.7.17 | Unix/Linux Shell程序设计视频-产品交付 |  | 1d | 2013-03-14 A | 2013-03-14 A | 70 | 100% |  |
| 74 | 1.7.18 | Unix/Linux Shell程序设计-产品完整交付 | milestone | 1d | 2013-03-14 A | 2013-03-14 A | 73FF | 100% |  |
| 75 | 1.8 | **Android开发基础应用（产品研发与交付周期）** |  | 35d | 2013-03-25 A | 2013-05-14 A |  | 100% | start no earlier than 2013-02-26 |
| 76 | 1.8.1 | Android开发基础应用第一章PPT |  | 2d | 2013-03-25 A | 2013-03-26 A |  | 100% | start no earlier than 2013-03-25 |
| 77 | 1.8.2 | Android开发基础应用第一章视频 |  | 2d | 2013-03-27 A | 2013-03-28 A | 76 | 100% |  |
| 78 | 1.8.3 | Android开发基础应用第二章PPT |  | 2d | 2013-03-29 A | 2013-04-01 A | 77 | 100% |  |
| 79 | 1.8.4 | Android开发基础应用第二章视频 |  | 2d | 2013-04-02 A | 2013-04-03 A | 78 | 100% |  |
| 80 | 1.8.5 | Android开发基础应用第三章PPT |  | 2d | 2013-04-07 A | 2013-04-08 A | 79 | 100% |  |
| 81 | 1.8.6 | Android开发基础应用第三章视频 |  | 2d | 2013-04-09 A | 2013-04-10 A | 80 | 100% |  |
| 82 | 1.8.7 | Android开发基础应用第四章PPT |  | 2d | 2013-04-11 A | 2013-04-12 A | 81 | 100% |  |
| 83 | 1.8.8 | Android开发基础应用第四章视频 |  | 2d | 2013-04-15 A | 2013-04-16 A | 82 | 100% |  |
| 84 | 1.8.9 | Android开发基础应用第五章PPT |  | 2d | 2013-04-17 A | 2013-04-18 A | 83 | 100% |  |
| 85 | 1.8.10 | Android开发基础应用第五章视频 |  | 2d | 2013-04-19 A | 2013-04-22 A | 84 | 100% |  |
| 86 | 1.8.11 | Android开发基础应用第六章PPT |  | 2d | 2013-04-23 A | 2013-04-24 A | 85 | 100% |  |
| 87 | 1.8.12 | Android开发基础应用第七章PPT |  | 2d | 2013-04-25 A | 2013-04-26 A | 86 | 100% |  |
| 88 | 1.8.13 | Android开发基础应用第六章视频 |  | 2d | 2013-04-27 A | 2013-04-28 A | 87 | 100% |  |
| 89 | 1.8.14 | Android开发基础应用第七章视频 |  | 2d | 2013-05-02 A | 2013-05-03 A | 88 | 100% |  |
| 90 | 1.8.15 | Android开发基础应用第八章PPT |  | 2d | 2013-05-06 A | 2013-05-07 A | 89 | 100% |  |
| 91 | 1.8.16 | Android开发基础应用第八章视频 |  | 2d | 2013-05-08 A | 2013-05-09 A | 90 | 100% |  |
| 92 | 1.8.17 | Android开发基础配套习题 |  | 30d | 2013-03-29 A | 2013-05-13 A | 77 | 100% |  |
| 93 | 1.8.18 | Android开发基础应用-产品交付 | milestone | 1d | 2013-05-14 A | 2013-05-14 A | 92 | 100% |  |

| ID | WBS | Task | Type | Duration | Start | Finish | Predecessors | Complete | Constraint |
| --- | --- | --- | --- | --- | --- | --- | --- | --- | --- |
| 94 | 1.9 | **Android开发高级应用（产品研发与交付周期）** |  | 61d | 2013-03-06 A | 2013-05-31 A |  | 100% |  |
| 95 | 1.9.1 | Android开发高级应用第一章PPT |  | 4d | 2013-05-10 A | 2013-05-15 A | 91 | 100% |  |
| 96 | 1.9.2 | Android开发高级应用第一章视频 |  | 2d | 2013-05-16 A | 2013-05-17 A | 95 | 100% |  |
| 97 | 1.9.3 | Android开发高级应用第二章PPT |  | 4d | 2013-05-20 A | 2013-05-23 A | 96 | 100% |  |
| 98 | 1.9.4 | Android开发高级应用第二章视频 |  | 2d | 2013-05-24 A | 2013-05-27 A | 97 | 100% |  |
| 99 | 1.9.5 | Android开发高级应用第三章PPT |  | 4d | 2013-04-18 A | 2013-04-23 A | 39 | 100% |  |
| 100 | 1.9.6 | Android开发高级应用第三章视频 |  | 2d | 2013-04-24 A | 2013-04-25 A | 99 | 100% |  |
| 101 | 1.9.7 | Android开发高级应用第四章PPT |  | 5d | 2013-03-06 A | 2013-03-12 A |  | 100% | finish no earlier than 2013-03-12 |
| 102 | 1.9.8 | Android开发高级应用第四章视频 |  | 3d | 2013-03-13 A | 2013-03-15 A | 101 | 100% |  |
| 103 | 1.9.9 | Android开发高级应用第五章PPT |  | 4d | 2013-04-26 A | 2013-05-02 A | 100 | 100% |  |
| 104 | 1.9.10 | Android开发高级应用第五章视频 |  | 2d | 2013-05-03 A | 2013-05-06 A | 103 | 100% |  |
| 105 | 1.9.11 | Android开发高级应用第六章PPT |  | 4d | 2013-05-07 A | 2013-05-10 A | 104 | 100% |  |
| 106 | 1.9.12 | Android开发高级应用第六章视频 |  | 2d | 2013-05-13 A | 2013-05-14 A | 105 | 100% |  |
| 107 | 1.9.13 | Android开发高级应用第七章PPT |  | 4d | 2013-05-15 A | 2013-05-20 A | 106 | 100% |  |
| 108 | 1.9.14 | Android开发高级应用第七章视频 |  | 2d | 2013-05-21 A | 2013-05-22 A | 107 | 100% |  |
| 109 | 1.9.15 | Android开发高级应用第八章PPT |  | 4d | 2013-05-23 A | 2013-05-28 A | 108 | 100% |  |
| 110 | 1.9.16 | Android开发高级应用第八章视频 |  | 2d | 2013-05-29 A | 2013-05-30 A | 109 | 100% |  |
| 111 | 1.9.17 | Android开发高级配套习题(一) |  | 10d | 2013-05-14 A | 2013-05-27 A | 92 | 100% |  |
| 112 | 1.9.18 | Android开发高级配套习题(二) |  | 25d | 2013-04-26 A | 2013-05-31 A | 100 | 100% |  |
| 113 | 1.9.19 | Android开发高级应用-产品交付 | milestone | 1d | 2013-05-28 A | 2013-05-28 A | 111 | 100% |  |
| 114 | 1.10 | **Android网络编程（产品研发与交付周期）** |  | 87d | 2013-02-27 A | 2013-07-02 A |  | 100% | start no earlier than 2013-02-27 |
| 115 | 1.10.1 | Android网络编程第一章PPT |  | 4d | 2013-05-31 A | 2013-06-05 A | 110 | 100% |  |
| 116 | 1.10.2 | Android网络编程第一章视频 |  | 2d | 2013-06-06 A | 2013-06-07 A | 115 | 100% |  |
| 117 | 1.10.3 | Android网络编程第二章PPT |  | 6d | 2013-04-18 A | 2013-04-25 A | 43 | 100% |  |
| 118 | 1.10.4 | Android网络编程第二章视频 |  | 6d | 2013-04-26 A | 2013-05-06 A | 117 | 100% |  |
| 119 | 1.10.5 | Android网络编程第三章PPT |  | 4d | 2013-05-07 A | 2013-05-10 A | 118 | 100% |  |
| 120 | 1.10.6 | Android网络编程第三章视频 |  | 2d | 2013-05-13 A | 2013-05-14 A | 119 | 100% |  |
| 121 | 1.10.7 | Android网络编程第四章PPT |  | 4d | 2013-05-15 A | 2013-05-20 A | 120 | 100% |  |
| 122 | 1.10.8 | Android网络编程第四章视频 |  | 2d | 2013-05-21 A | 2013-05-22 A | 121 | 100% |  |
| 123 | 1.10.9 | Android网络编程第五章PPT |  | 4d | 2013-05-23 A | 2013-05-28 A | 122 | 100% |  |
| 124 | 1.10.10 | Android网络编程第五章视频 |  | 2d | 2013-05-29 A | 2013-05-30 A | 123 | 100% |  |
| 125 | 1.10.11 | Android网络编程第六章PPT |  | 4d | 2013-05-31 A | 2013-06-05 A | 124 | 100% |  |
| 126 | 1.10.12 | Android网络编程第六章视频 |  | 2d | 2013-02-27 A | 2013-02-28 A |  | 100% |  |
| 127 | 1.10.13 | Android网络编程配套习题 |  | 20d | 2013-06-03 A | 2013-07-01 A | 112 | 100% |  |
| 128 | 1.10.14 | Android网络编程-产品交付 | milestone | 1d | 2013-07-02 A | 2013-07-02 A | 127 | 100% |  |

| ID | WBS | Task | Type | Duration | Start | Finish | Predecessors | Complete | Constraint |
| --- | --- | --- | --- | --- | --- | --- | --- | --- | --- |
| 129 | 1.11 | **Andorid框架原理（产品研发与交付周期）** |  | 21d | 2013-06-08 A | 2013-07-09 A | 116 | 100% |  |
| 130 | 1.11.1 | Android框架原理第一章PPT |  | 5d | 2013-06-08 A | 2013-06-17 A | 116 | 100% |  |
| 131 | 1.11.2 | Android框架原理第一章视频 |  | 5d | 2013-06-18 A | 2013-06-24 A | 130 | 100% |  |
| 132 | 1.11.3 | Android框架原理第二章PPT |  | 5d | 2013-06-25 A | 2013-07-01 A | 131 | 100% |  |
| 133 | 1.11.4 | Android框架原理第二章视频 |  | 5d | 2013-07-02 A | 2013-07-08 A | 132 | 100% |  |
| 134 | 1.11.5 | Android框架原理配套习题 |  | 20d | 2013-06-08 A | 2013-07-08 A | 111 | 100% |  |
| 135 | 1.11.6 | Android框架原理-产品交付 | milestone | 1d | 2013-07-09 A | 2013-07-09 A | 134 | 100% |  |
| 136 | 1.12 | **源码管理与版本控制（产品研发与交付周期）** |  | 20d | 2013-03-25 A | 2013-04-22 A | 126 | 100% |  |
| 137 | 1.12.1 | 源码管理与版本控制大纲确立 |  | 1d | 2013-03-25 A | 2013-03-25 A | 126 | 100% | start no earlier than 2013-03-25 |
| 138 | 1.12.2 | 源码管理与版本控制第一章PPT |  | 4d | 2013-03-26 A | 2013-03-29 A | 137 | 100% |  |
| 139 | 1.12.3 | 源码管理与版本控制第一章视频 |  | 2d | 2013-04-01 A | 2013-04-02 A | 138 | 100% |  |
| 140 | 1.12.4 | 源码管理与版本控制第二章PPT |  | 4d | 2013-04-03 A | 2013-04-09 A | 139 | 100% |  |
| 141 | 1.12.5 | 源码管理与版本控制第二章视频 |  | 2d | 2013-04-10 A | 2013-04-11 A | 140 | 100% |  |
| 142 | 1.12.6 | 源码管理与版本控制第三章PPT |  | 4d | 2013-04-12 A | 2013-04-17 A | 141 | 100% |  |
| 143 | 1.12.7 | 源码管理与版本控制第三章视频 |  | 2d | 2013-04-18 A | 2013-04-19 A | 142 | 100% |  |
| 144 | 1.12.8 | 源码管理与版本控制-产品交付 | milestone | 1d | 2013-04-22 A | 2013-04-22 A | 143 | 100% |  |
| 145 | 1.13 | **软件测试技术与测试技巧（产品研发与交付周期）** |  | 59d | 2013-04-26 A | 2013-07-19 A | 55 | 100% |  |
| 146 | 1.13.1 | 软件测试技术与测试技巧大纲确立 |  | 10d | 2013-04-26 A | 2013-05-10 A | 55 | 100% |  |
| 147 | 1.13.2 | 软件测试技术与测试技巧第一章PPT |  | 4d | 2013-05-13 A | 2013-05-16 A | 146 | 100% |  |
| 148 | 1.13.3 | 软件测试技术与测试技巧第一章视频 |  | 2d | 2013-05-17 A | 2013-05-20 A | 147 | 100% |  |
| 149 | 1.13.4 | 软件测试技术与测试技巧第二章PPT |  | 4d | 2013-05-21 A | 2013-05-24 A | 148 | 100% |  |
| 150 | 1.13.5 | 软件测试技术与测试技巧第二章视频 |  | 2d | 2013-05-27 A | 2013-05-28 A | 149 | 100% |  |
| 151 | 1.13.6 | 软件测试技术与测试技巧第三章PPT |  | 4d | 2013-05-29 A | 2013-06-03 A | 150 | 100% |  |
| 152 | 1.13.7 | 软件测试技术与测试技巧第三章视频 |  | 2d | 2013-06-04 A | 2013-06-05 A | 151 | 100% |  |
| 153 | 1.13.8 | 软件测试技术与测试技巧第四章PPT |  | 4d | 2013-06-06 A | 2013-06-09 A | 152 | 100% |  |
| 154 | 1.13.9 | 软件测试技术与测试技巧第四章视频 |  | 2d | 2013-06-13 A | 2013-06-14 A | 153 | 100% |  |
| 155 | 1.13.10 | 软件测试技术与测试技巧第五章PPT |  | 4d | 2013-06-17 A | 2013-06-20 A | 154 | 100% |  |
| 156 | 1.13.11 | 软件测试技术与测试技巧第五章视频 |  | 2d | 2013-06-21 A | 2013-06-24 A | 155 | 100% |  |
| 157 | 1.13.12 | 软件测试技术与测试技巧第六章PPT |  | 4d | 2013-06-25 A | 2013-06-28 A | 156 | 100% |  |
| 158 | 1.13.13 | 软件测试技术与测试技巧第六章视频 |  | 2d | 2013-07-01 A | 2013-07-02 A | 157 | 100% |  |
| 159 | 1.13.14 | 软件测试技术与测试技巧第七章PPT |  | 4d | 2013-07-03 A | 2013-07-08 A | 158 | 100% |  |
| 160 | 1.13.15 | 软件测试技术与测试技巧第七章视频 |  | 2d | 2013-07-09 A | 2013-07-10 A | 159 | 100% |  |
| 161 | 1.13.16 | 软件测试技术与测试技巧第八章PPT |  | 4d | 2013-07-11 A | 2013-07-16 A | 160 | 100% |  |
| 162 | 1.13.17 | 软件测试技术与测试技巧第八章视频 |  | 2d | 2013-07-17 A | 2013-07-18 A | 161 | 100% |  |
| 163 | 1.13.18 | 软件测试技术与测试技巧-产品交付 | milestone | 1d | 2013-07-19 A | 2013-07-19 A | 162 | 100% |  |

| ID | WBS | Task | Duration | Start | Finish | Predecessors | Complete |
| --- | --- | --- | --- | --- | --- | --- | --- |
| 164 | 1.14 | **综合项目实战（产品研发与交付周期）** | 16d | 2013-04-23 A | 2013-05-15 A | 144 | 100% |
| 165 | 1.14.1 | 项目设计与理解 | 5d | 2013-04-23 A | 2013-04-27 A | 144 | 100% |
| 166 | 1.14.2 | 项目指导手册 | 5d | 2013-04-28 A | 2013-05-07 A | 165 | 100% |
| 167 | 1.14.3 | 项目编写与维护 | 5d | 2013-05-08 A | 2013-05-14 A | 166 | 100% |
| 168 | 1.14.4 | 实训项目-产品交付 | 1d | 2013-05-15 A | 2013-05-15 A | 167 | 100% |
